Schedule from MS Project, 2025-04-02 to 2026-04-15, costs in €.

## Calendars

- Standard: Mon-Fri 08:00-12:00, 13:00-17:00; Sat-Sun off. Exceptions (off unless hours are given): 2025-01-01 to 2029-01-01 (Holiday 1 (Διακοπές 1), recurring), 2025-01-06 to 2029-01-06 (Holiday 2 (Διακοπές 2), recurring), 2025-03-25 to 2029-03-25 (Holiday 3 (Διακοπές 3), recurring), 2025-04-01 to 2029-04-01 (Holiday 4 (Διακοπές 4), recurring), 2025-05-01 to 2029-05-01 (Holiday 5 (Διακοπές 5), recurring), 2025-08-15 to 2025-08-25 (Holiday 6 (Διακοπές 6)), 2025-10-01 to 2029-10-01 (Holiday 7 (Διακοπές 7), recurring), 2025-10-28 to 2029-10-28 (Holiday 8 (Διακοπές 8), recurring), 2025-12-25 to 2029-12-25 (Holiday 9 (Διακοπές 9), recurring), 2025-12-31 to 2029-12-31 (Holiday 10 (Διακοπές 10), recurring).

## Resources

| Resource | Unit | Rate |
| --- | --- | --- |
| Εκσκαφέας |  | 50 |
| Φορτηγό |  | 18 |
| Προκαταρτκτικά |  |  |
| Σχέδιο Ασφάλειας και Υγείας |  |  |
| Σκυρόδεμα Καθαριότητας | m3 | 97 |
| Είδη υγιεινής - Ντουζιέρα |  | 220 |
| Εργάτης 1 |  | 6 |
| Εργάτης 2 |  | 6 |
| Εργάτης 3 |  | 6 |
| Εργάτης 4 |  | 6 |
| Εργάτης 5 |  | 6 |
| Εργάτης 6 |  | 6 |
| Τεχνίτης 1 |  | 10 |
| Τεχνίτης 2 |  | 10 |
| Τεχνίτης 3 |  | 10 |
| Τεχνίτης 4 |  | 10 |
| Τεχνίτης 5 |  | 10 |
| Τεχνίτης 6 |  | 10 |
| Τεχνίτης 7 |  | 10 |
| Τεχνίτης 8 |  | 10 |
| Τεχνίτης 9 |  | 10 |
| Τεχνίτης 10 |  | 10 |
| Τεχνίτης 11 |  | 10 |
| Υδραυλικός 4 |  |  |
| Οπλισμός | kg | 0.93 |
| Ξυλότυπος | m2 | 12 |
| Σκυρόδεμα | m3 | 97 |
| Υγρομόνωση | m2 | 20 |
| Screed | m2 | 17 |
| Ξυλότυπος 1 | m2 | 12 |
| Ξυλότυπος - περιορισμός | m2 | 12 |
| Πηλός | m3 | 4 |
| Τοιχοποιία | pcs | 0.3 |
| Επιχρίσματα | m2 | 3.5 |
| Θερμομόνωση | m2 | 40 |
| Κεραμικά | m2 | 42 |
| Κουφώματα - εξώπορτα ασφαλείας | m2 | 400 |
| Είδη υγιεινής - Νεροχύτης κουζίνας | pcs | 180 |
| Ηλεκτρολόγος 1 |  |  |
| Ηλεκτρολόγος 2 |  |  |
| Ηλεκτρολόγος 3 |  |  |
| Ηλεκτρολόγος 4 |  |  |
| Υδραυλικός 1 |  |  |
| Υδραυλικός 2 |  |  |
| Υδραυλικός 3 |  |  |
| Σιδεράς 1 (Τεχνίτης) |  | 10 |
| Σιδεράς 2 (Τεχνίτης) |  | 10 |
| Σιδεράς 3 (Τεχνίτης) |  | 10 |
| Σιδεράς 4 (Τεχνίτης) |  | 10 |
| Σιδεράς 5 (Τεχνίτης) |  | 10 |
| Ποδιές Παραθύρων | meter | 35 |
| Θερμομόνωση - Ηχομόνωση | m2 | 40 |
| Κουφώματα - πόρτες εσωτερικές | m2 | 300 |
| Κουφώματα - μπαλκονόπορτες | m2 | 230 |
| Κουφώματα - παράθυρα | m2 | 300 |
| Σιδεράς 10 (Τεχνίτης) |  | 10 |
| Μπογιατζής 1 |  |  |
| Εργασίες Μπογιατίσματος | m2 | 3.5 |
| Ελαιοχρωματισμοί | m2 | 0.3 |
| Είδη υγιεινής - Νιπτήρας μπάνιου | pcs | 100 |
| Ντουλάπες |  | 220 |
| Κουζίνες | meter | 200 |
| Είδη υγιεινής - Ντουζιέρα | pcs | 220 |
| Είδη υγιεινής - Αποχωρητήριο | pcs | 180 |
| Σιδεράς 6 (Τεχνίτης) |  | 10 |
| Σιδεράς 7 (Τεχνίτης) |  | 10 |
| Σιδεράς 8 (Τεχνίτης) |  | 10 |
| Σιδεράς 9 (Τεχνίτης) |  | 10 |
| Τεχνίτης 12 |  | 10 |
| Τεχνίτης 13 |  | 10 |
| Τεχνίτης 14 |  | 10 |
| Τεχνίτης 15 |  | 10 |
| Τεχνίτης 16 |  | 10 |
| Τεχνίτης 17 |  | 10 |
| Τεχνίτης 18 |  | 10 |
| Τεχνίτης 19 |  | 10 |
| Τεχνίτης 20 |  | 10 |
| Μπογιατζής 2 |  |  |
| Μπογιατζής 3 |  |  |
| Μπογιατζής 4 |  |  |
| Μπογιατζής 5 |  |  |
| Είδη υγιεινής - Νεροχύτης κουζίνας |  | 180 |
| Είδη υγιεινής - Νιπτήρας μπάνιου |  | 100 |

## Schedule

| ID | WBS | Task | Duration | Start | Finish | Predecessors | Total slack | Free slack | Constraint | Resources | Work | Cost |
| --- | --- | --- | --- | --- | --- | --- | --- | --- | --- | --- | --- | --- |
| 1 | 1 | **Χρονοπρογραμματισμός** | 255d | 2025-04-02 | 2026-04-15 |  | 0d |  |  |  | 5743.52h | 502,040.75 |
| 2 | 1.1 | **Φάση 1: Έναρξη και Προετιμασία Σκυροδέτησης** | 32.5d | 2025-04-02 | 2025-05-19 |  | 9d |  |  |  | 76.56h | 11,140.54 |
| 3 | 1.1.1 | Προκαταρτικά | 1d | 2025-04-02 | 2025-04-02 |  | 9d | 0d |  |  |  | 5,000 |
| 4 | 1.1.2 | Σχέδιο Ασφάλειας και Υγείας | 15d | 2025-04-03 | 2025-04-23 | 3 | 9d | 0d |  |  |  | 1,500 |
| 5 | 1.1.3 | Εκσκαφές | 8d | 2025-04-24 | 2025-05-16 | 4, 3 | 9d | 0d |  | Φορτηγό [50%]; Εκσκαφέας [50%] | 52.56h | 1,696.16 |
| 6 | 1.1.4 | Σκυρόδεμα Καθαριότητας | 1d | 2025-05-16 | 2025-05-19 | 5 | 9.5d | 0.5d |  | Σκυρόδεμα Καθαριότητας [28.54 m3]; Τεχνίτης 1; Εργάτης 1; Εργάτης 2 | 24h | 2,944.38 |
| 7 | 1.2 | **Φάση 2α: Κατασκευή Θεμελίωσης** | 72d | 2025-05-20 | 2025-09-05 |  | 0d |  |  |  | 574.6h | 57,069.1 |
| 8 | 1.2.1 | Χάραξη Υποστυλωμάτων | 1d | 2025-05-20 | 2025-05-20 | 6 | 9d | 0d | start no earlier than 2025-05-20 | Εργάτης 1; Εργάτης 2; Τεχνίτης 1 | 24h | 176 |
| 9 | 1.2.2 | Σιδέρωμα Θεμελίωσης και Υποστυλωμάτων Ισογείου | 4d | 2025-05-21 | 2025-05-26 | 8 | 9d | 0d | start no earlier than 2025-05-20 | Οπλισμός [13030 kg]; Σιδεράς 1 (Τεχνίτης); Σιδεράς 2 (Τεχνίτης); Σιδεράς 3 (Τεχνίτης); Σιδεράς 4 (Τεχνίτης); Σιδεράς 5 (Τεχνίτης) | 129.6h | 13,413.9 |
| 10 | 1.2.3 | Καλούπωμα Στοιχείων Θεμελίωσης | 4d | 2025-05-27 | 2025-05-30 | 9 | 9d | 0d |  | Τεχνίτης 1; Τεχνίτης 2; Τεχνίτης 3; Τεχνίτης 4; Τεχνίτης 5; Τεχνίτης 6; Ξυλότυπος [254 m2] | 149.28h | 4,540.8 |
| 11 | 1.2.4 | Υδραυλικός: Αποχετεύσεις και Σωληνώσεις (20%) | 2d | 2025-06-02 | 2025-06-03 | 10 | 9d | 0d |  | Υδραυλικός 1 [0.1%]; Υδραυλικός 2 [0.1%] |  | 3,411.52 |
| 12 | 1.2.5 | Ηλεκτρολόγος: Σωληνώσεις και Καλώδια (20%) | 2d | 2025-06-04 | 2025-06-05 | 11 | 9d |  |  | Ηλεκτρολόγος 1 [0.1%]; Ηλεκτρολόγος 2 [0.1%] |  | 2,680.48 |
| 13 | 1.2.6 | Σκυροδέτηση Πελμάτων Θεμελίων | 1d | 2025-06-19 | 2025-06-19 | 12 | 0d |  | finish no earlier than 2025-06-19 | Σκυρόδεμα [133.1 m3]; Τεχνίτης 1; Εργάτης 5; Εργάτης 6 | 6h | 12,954.7 |
| 14 | 1.2.7 | Αναμονή και Συντήρηση Σκυροδέματος | 14d | 2025-06-20 | 2025-07-09 | 13 | 0d |  | finish no earlier than 2025-06-23 | Εργάτης 1 [12.5%] | 14h | 84 |
| 15 | 1.2.8 | Αφαίρεση Καλουπιών | 3d | 2025-07-10 | 2025-07-14 | 14 | 0d |  | finish no earlier than 2025-07-02 | Τεχνίτης 1 [75%]; Εργάτης 1 [75%]; Εργάτης 2 [75%]; Εργάτης 3 [75%]; Εργάτης 4 [75%]; Εργάτης 5 [75%] | 96h | 640 |
| 16 | 1.2.9 | Επιχωμάτωση Κενών Θεμελίωσης | 6d | 2025-07-15 | 2025-07-30 | 15 | 0d |  | finish no earlier than 2025-07-03 | Φορτηγό [34.7%]; Εκσκαφέας [38%] | 29.79h | 957.02 |
| 17 | 1.2.10 | Σιδέρωμα και Σκυροδέτηση Πλάκας Ισογείου | 2d | 2025-07-31 | 2025-08-01 | 16 | 0d |  | start no earlier than 2025-07-31 | Σκυρόδεμα [34.4 m3]; Οπλισμός [4700 kg]; Εργάτης 5 [75%]; Εργάτης 6 [75%]; Σιδεράς 6 (Τεχνίτης) [48.9%]; Σιδεράς 7 (Τεχνίτης) [48.9%]; Σιδεράς 8 (Τεχνίτης) [48.9%]; Σιδεράς 9 (Τεχνίτης) [48.9%]; Σιδεράς 10 (Τεχνίτης) [48.9%]; Τεχνίτης 20 [75%] | 45.15h | 8,143.3 |
| 18 | 1.2.11 | Αναμονή και Συντήρηση Σκυροδέματος | 14d | 2025-08-04 | 2025-09-01 | 17 | 0d |  |  | Εργάτης 1 [12.5%] | 14h | 84 |
| 19 | 1.2.12 | Υγρομόνωση Στοιχείων Θεμελίωσης | 3d | 2025-09-02 | 2025-09-04 | 18 | 0d |  |  | Τεχνίτης 1 [51%]; Τεχνίτης 2 [51%]; Τεχνίτης 3 [51%]; Τεχνίτης 4 [51%]; Τεχνίτης 5 [51%]; Υγρομόνωση [230 m2] | 61.2h | 5,212 |
| 20 | 1.2.13 | Σκυροδέτηση Screed | 1d | 2025-09-05 | 2025-09-05 | 19 | 0d |  |  | Screed [278.7 m2]; Εργάτης 1 [23.2%]; Εργάτης 2 [23.2%]; Εργάτης 3 [23.2%] | 5.58h | 4,771.38 |
| 21 | 1.3 | **Φάση 2β: Κατασκευή Τυπικού Ορόφου** | 150d | 2025-09-08 | 2026-04-15 |  | 0d |  |  |  | 1960.26h | 143,574.64 |
| 22 | 1.3.1 | **Ισόγειο** | 40d | 2025-09-08 | 2025-11-04 |  | 0d |  |  |  | 549.4h | 37,615.83 |
| 23 | 1.3.1.1 | Καλούπωμα Υποστυλωμάτων και Τοιχείων Ισογείου | 3d | 2025-09-08 | 2025-09-10 | 20 | 0d |  | finish no earlier than 2025-07-30 | Ξυλότυπος 1 [166.23 m2]; Τεχνίτης 1; Τεχνίτης 2; Τεχνίτης 3; Τεχνίτης 4; Τεχνίτης 5 | 97.8h | 2,972.76 |
| 24 | 1.3.1.2 | Σκυροδέτηση Υποστυλωμάτων | 2d | 2025-09-11 | 2025-09-12 | 23 | 0d |  | finish no earlier than 2025-08-08 | Σκυρόδεμα [20.13 m3]; Εργάτης 1 [67%]; Εργάτης 2 [67%]; Τεχνίτης 11 [53.6%] | 30h | 2,166.9 |
| 25 | 1.3.1.3 | Αναμονή και Συντήρηση Σκυροδέματος | 3d | 2025-09-15 | 2025-09-17 | 24 | 0d |  | finish no earlier than 2025-08-13 | Εργάτης 1 [25%] | 6h | 36 |
| 26 | 1.3.1.4 | Καλούπωμα Δοκών και Πλακών | 6d | 2025-09-18 | 2025-09-25 | 25 | 0d |  | finish no earlier than 2025-08-25 | Ξυλότυπος - περιορισμός [366.39 m2]; Τεχνίτης 1 [89.7%]; Τεχνίτης 2 [89.7%]; Τεχνίτης 3 [89.7%]; Τεχνίτης 4 [89.7%]; Τεχνίτης 5 [89.7%] | 215.2h | 6,548.68 |
| 27 | 1.3.1.5 | Σιδέρωμα Δοκών και Πλακών 1ου Ορόφου | 5d | 2025-09-26 | 2025-10-03 | 26 | 0d |  | finish no earlier than 2025-09-04 | Οπλισμός [13470 kg]; Σιδεράς 6 (Τεχνίτης) [81.2%]; Σιδεράς 7 (Τεχνίτης) [81.2%]; Σιδεράς 8 (Τεχνίτης) [81.2%]; Σιδεράς 9 (Τεχνίτης) [81.2%]; Σιδεράς 10 (Τεχνίτης) [81.2%] | 162.4h | 14,151.1 |
| 28 | 1.3.1.6 | Υδραυλικός: Αποχετεύσεις και Σωληνώσεις (20%) | 2d | 2025-10-06 | 2025-10-07 | 27 | 0d |  | finish no earlier than 2025-09-05 | Υδραυλικός 1 [0.1%]; Υδραυλικός 2 [0.1%] |  | 3,534.6 |
| 29 | 1.3.1.7 | Ηλεκτρολόγος: Σωληνώσεις (20%) | 2d | 2025-10-08 | 2025-10-09 | 28 | 0d |  | finish no earlier than 2025-09-08 | Ηλεκτρολόγος 1 [0.1%]; Ηλεκτρολόγος 2 [0.1%] |  | 2,807.45 |
| 30 | 1.3.1.8 | Σκυροδέτηση Δοκών και Πλακών | 1d | 2025-10-10 | 2025-10-10 | 29 | 0d |  | start no earlier than 2025-09-09 | Σκυρόδεμα [53.22 m3]; Εργάτης 1 [25%]; Εργάτης 2 [25%]; Τεχνίτης 2 [25%] | 6h | 5,206.34 |
| 31 | 1.3.1.9 | Αναμονή και Συντήρηση Σκυροδέματος | 16d | 2025-10-13 | 2025-11-04 | 30 | 0d |  | finish no earlier than 2025-10-01 | Εργάτης 1 [25%] | 32h | 192 |

| ID | WBS | Task | Duration | Start | Finish | Predecessors | Total slack | Constraint | Resources | Work | Cost |
| --- | --- | --- | --- | --- | --- | --- | --- | --- | --- | --- | --- |
| 32 | 1.3.2 | **1ος Όροφος** | 41d | 2025-10-13 | 2025-12-09 |  | 0d |  |  | 476.08h | 36,462.13 |
| 33 | 1.3.2.1 | Καλούπωμα Υποστυλωμάτων και Τοιχείων 1ου Ορόφου | 5d | 2025-11-05 | 2025-11-11 | 31, 41 | 0d | finish no earlier than 2025-10-09 | Ξυλότυπος 1 [166.23 m2]; Τεχνίτης 9 [81.4%]; Τεχνίτης 10 [81.4%]; Τεχνίτης 11 [81.4%] | 97.68h | 2,971.56 |
| 34 | 1.3.2.2 | Σκυροδέτηση Υποστυλωμάτων | 1d | 2025-11-12 | 2025-11-12 | 33 | 0d | start no earlier than 2025-10-13 | Σκυρόδεμα [20.13 m3]; Τεχνίτης 11 [25%]; Εργάτης 3 [25%]; Εργάτης 4 [25%] | 6h | 1,996.61 |
| 35 | 1.3.2.3 | Αναμονή και Συντήρηση Σκυροδέματος | 3d | 2025-11-13 | 2025-11-17 | 34 | 0d | finish no earlier than 2025-10-16 | Εργάτης 1 [25%] | 6h | 36 |
| 36 | 1.3.2.4 | Καλούπωμα Δοκών και Πλακών | 6d | 2025-11-18 | 2025-11-25 | 35 | 0d | finish no earlier than 2025-10-30 | Ξυλότυπος 1 [364.28 m2]; Τεχνίτης 7 [89.3%]; Τεχνίτης 8 [89.3%]; Τεχνίτης 9 [89.3%]; Τεχνίτης 10 [89.3%]; Τεχνίτης 11 [89.3%] | 214.4h | 6,515.36 |
| 37 | 1.3.2.5 | Σιδέρωμα Δοκών και Πλακών 2ου Ορόφου | 5d | 2025-11-26 | 2025-12-02 | 36 | 0d | finish no earlier than 2025-11-06 | Σιδεράς 1 (Τεχνίτης) [95%]; Σιδεράς 2 (Τεχνίτης) [95%]; Σιδεράς 3 (Τεχνίτης) [95%]; Οπλισμός [12900 kg] | 114h | 13,137 |
| 38 | 1.3.2.6 | Υδραυλικός: Αποχετεύσεις και Σωληνώσεις (20%) | 2d | 2025-12-03 | 2025-12-04 | 37 | 0d | finish no earlier than 2025-11-07 | Υδραυλικός 2 [0.1%]; Υδραυλικός 3 [0.1%] |  | 3,606.6 |
| 39 | 1.3.2.7 | Ηλεκτρολόγος: Σωληνώσεις (20%) | 2d | 2025-12-05 | 2025-12-08 | 38 | 0d | finish no earlier than 2025-11-10 | Ηλεκτρολόγος 1 [0.1%]; Ηλεκτρολόγος 2 [0.1%] |  | 2,807.45 |
| 40 | 1.3.2.8 | Σκυροδέτηση Δοκών και Πλακών | 1d | 2025-12-09 | 2025-12-09 | 39 | 0d | start no earlier than 2025-11-11 | Σκυρόδεμα [53.15 m3]; Εργάτης 1 [25%]; Εργάτης 2 [25%]; Τεχνίτης 17 [25%] | 6h | 5,199.55 |
| 41 | 1.3.2.9 | Αναμονή και Συντήρηση Σκυροδέματος | 16d | 2025-10-13 | 2025-11-04 | 30 | 0d | finish no earlier than 2025-10-01 | Εργάτης 6 [25%] | 32h | 192 |
| 42 | 1.3.3 | **2ος Όροφος** | 43d | 2025-12-10 | 2026-02-12 |  | 0d |  |  | 479.44h | 34,937.32 |
| 43 | 1.3.3.1 | Καλούπωμα Υποστυλωμάτων και Τοιχείων 2ου Ορόφου | 5d | 2025-12-10 | 2025-12-16 | 40 | 0d | finish no earlier than 2025-11-19 | Ξυλότυπος 1 [166.23 m2]; Τεχνίτης 1; Τεχνίτης 2; Τεχνίτης 3 | 120h | 3,194.76 |
| 44 | 1.3.3.2 | Σκυροδέτηση Υποστυλωμάτων | 1d | 2025-12-17 | 2025-12-17 | 43 | 0d | start no earlier than 2025-11-19 | Σκυρόδεμα [20.13 m3]; Εργάτης 4 [25%]; Εργάτης 5 [25%]; Τεχνίτης 12 [25%] | 6h | 1,996.61 |
| 45 | 1.3.3.3 | Αναμονή και Συντήρηση Σκυροδέματος | 3d | 2025-12-18 | 2025-12-22 | 44 | 0d | finish no earlier than 2025-11-24 | Εργάτης 6 [25%] | 6h | 36 |
| 46 | 1.3.3.4 | Καλούπωμα Δοκών και Πλακών | 7d | 2025-12-23 | 2026-01-05 | 45 | 0d | finish no earlier than 2025-12-01 | Ξυλότυπος [354.02 m2]; Τεχνίτης 16 [74.4%]; Τεχνίτης 17 [74.4%]; Τεχνίτης 18 [74.4%]; Τεχνίτης 19 [74.4%]; Τεχνίτης 20 [74.4%] | 208.4h | 6,332.24 |
| 47 | 1.3.3.5 | Σιδέρωμα Δοκών και Πλακών 3ου Ορόφου | 6d | 2026-01-07 | 2026-01-14 | 46 | 0d | finish no earlier than 2025-12-05 | Οπλισμός [11650 kg]; Σιδεράς 8 (Τεχνίτης) [70.2%]; Σιδεράς 9 (Τεχνίτης) [70.2%]; Σιδεράς 10 (Τεχνίτης) [70.2%] | 101.04h | 11,844.9 |
| 48 | 1.3.3.6 | Υδραυλικός: Αποχετεύσεις και Σωληνώσεις (20%) | 2d | 2026-01-15 | 2026-01-16 | 47 | 0d | finish no earlier than 2025-12-09 | Υδραυλικός 3 [0.1%]; Υδραυλικός 4 [0.1%] |  | 3,534.6 |
| 49 | 1.3.3.7 | Ηλεκτρολόγος: Σωληνώσεις (20%) | 2d | 2026-01-19 | 2026-01-20 | 48 | 0d | finish no earlier than 2025-12-10 | Ηλεκτρολόγος 3 [0.1%]; Ηλεκτρολόγος 4 [0.1%] |  | 2,807.45 |
| 50 | 1.3.3.8 | Σκυροδέτηση Δοκών και Πλακών | 1d | 2026-01-21 | 2026-01-21 | 49 | 0d | start no earlier than 2025-12-10 | Σκυρόδεμα [51.08 m3]; Τεχνίτης 1 [25%]; Εργάτης 1 [25%]; Εργάτης 2 [25%] | 6h | 4,998.76 |
| 51 | 1.3.3.9 | Αναμονή και Συντήρηση Σκυροδέματος | 16d | 2026-01-22 | 2026-02-12 | 50 | 0d | finish no earlier than 2026-01-01 | Εργάτης 1 [25%] | 32h | 192 |
| 52 | 1.3.4 | **3ος Όροφος** | 42d | 2026-02-13 | 2026-04-15 |  | 0d |  |  | 455.34h | 34,559.36 |
| 53 | 1.3.4.1 | Καλούπωμα Υποστυλωμάτων και Τοιχείων 3ου Ορόφου | 6d | 2026-02-13 | 2026-02-20 | 51 | 0d | finish no earlier than 2026-01-15 | Ξυλότυπος 1 [166.23 m2]; Τεχνίτης 14 [67.8%]; Τεχνίτης 7 [67.8%]; Τεχνίτης 8 [67.8%] | 97.68h | 2,971.56 |
| 54 | 1.3.4.2 | Σκυροδέτηση Υποστυλωμάτων | 1d | 2026-02-23 | 2026-02-23 | 53 | 0d | start no earlier than 2026-01-22 | Σκυρόδεμα [20.13 m3]; Τεχνίτης 11 [25%]; Εργάτης 5 [25%]; Εργάτης 6 [25%] | 6h | 1,996.61 |
| 55 | 1.3.4.3 | Αναμονή και Συντήρηση Σκυροδέματος | 3d | 2026-02-24 | 2026-02-26 | 54 | 0d | finish no earlier than 2026-01-27 | Εργάτης 1 [25%] | 6h | 36 |
| 56 | 1.3.4.4 | Καλούπωμα Δοκών και Πλακών | 9d | 2026-02-27 | 2026-03-11 | 55 | 0d | finish no earlier than 2026-02-04 | Ξυλότυπος 1 [348.89 m2]; Τεχνίτης 7 [73.3%]; Τεχνίτης 8 [67.9%]; Τεχνίτης 9 [73.3%]; Τεχνίτης 10 [67.9%]; Τεχνίτης 11 [73.3%] | 205.2h | 6,238.68 |
| 57 | 1.3.4.5 | Σιδέρωμα Δοκών και Πλακών Ταβανιού | 2d | 2026-03-12 | 2026-03-13 | 56 | 0d | finish no earlier than 2026-02-10 | Σιδεράς 3 (Τεχνίτης) [84.5%]; Οπλισμός [6490 kg]; Σιδεράς 1 (Τεχνίτης) [89.1%]; Σιδεράς 2 (Τεχνίτης) [89.1%] | 40.56h | 6,441.3 |
| 58 | 1.3.4.6 | Υδραυλικός: Αποχετεύσεις και Σωληνώσεις (20%) | 2d | 2026-03-16 | 2026-03-17 | 57 | 0d | finish no earlier than 2026-02-11 | Υδραυλικός 2 [0.1%]; Υδραυλικός 3 [0.1%] |  | 3,546.5 |
| 59 | 1.3.4.7 | Ηλεκτρολόγος: Σωληνώσεις (20%) | 2d | 2026-03-18 | 2026-03-19 | 58 | 0d | finish no earlier than 2026-02-12 | Ηλεκτρολόγος 2 [0.1%]; Ηλεκτρολόγος 3 [0.1%] |  | 2,816.8 |
| 60 | 1.3.4.8 | Σκυροδέτηση Δοκών και Πλακών | 1d | 2026-03-20 | 2026-03-20 | 59 | 0d | start no earlier than 2026-02-13 | Σκυρόδεμα [49.23 m3]; Εργάτης 1 [12.5%]; Εργάτης 2 [12.5%]; Τεχνίτης 12 [50%] | 6h | 4,827.31 |
| 61 | 1.3.4.9 | Αναμονή και Συντήρηση Σκυροδέματος | 16d | 2026-03-23 | 2026-04-15 | 60 | 0d | finish no earlier than 2026-03-09 | Εργάτης 1 [25%] | 32h | 192 |
| 62 | 1.3.4.10 | Λαστ Φλοορ ωατερπροοφινγ | 2.99d | 2026-03-12 | 2026-03-16 |  | 20.01d | start no earlier than 2026-03-12 | Υγρομόνωση [243.68 m2]; Τεχνίτης 6; Τεχνίτης 7 [51.7%]; Τεχνίτης 9 [51.7%]; Τεχνίτης 12 [52%]; Τεχνίτης 13 [52%] | 61.9h | 5,492.6 |

| ID | WBS | Task | Duration | Start | Finish | Predecessors | Total slack | Free slack | Constraint | Resources | Work | Cost |
| --- | --- | --- | --- | --- | --- | --- | --- | --- | --- | --- | --- | --- |
| 63 | 1.4 | **Φάση 3: Εργασίες Μετά τις Σκυροδετήσεις** | 123d | 2025-09-15 | 2026-03-12 |  | 22d |  |  |  | 2710.02h | 230,326.37 |
| 64 | 1.4.1 | **Ισόγειο** | 56d | 2025-09-15 | 2025-12-03 |  | 89d |  |  |  | 503.62h | 51,857.9 |
| 65 | 1.4.1.1 | Κατασκευή Τοιχοποληρώσεων Ισογείου | 5d | 2025-09-15 | 2025-09-19 |  | 124d | 0d | finish no earlier than 2025-09-19 | Πηλός [2.56 m3]; Τοιχοποιία [2560 pcs]; Τεχνίτης 8 [93%]; Εργάτης 6 [93%] | 74.4h | 1,373.44 |
| 66 | 1.4.1.2 | Υδραυλικός: Aποχετεύσεις και Σωληνώσεις (35%) | 4d | 2025-09-22 | 2025-09-25 | 65 | 124d | 0d | finish no earlier than 2025-09-25 | Υδραυλικός 1 [0.1%]; Υδραυλικός 2 [0.1%] |  | 6,186.98 |
| 67 | 1.4.1.3 | Ηλεκτρολόγος: Σωληνώσεις (30%) | 4d | 2025-09-26 | 2025-10-02 | 66 | 124d | 0d | finish no earlier than 2025-09-30 | Ηλεκτρολόγος 1 [0.1%]; Ηλεκτρολόγος 2 [0.1%]; Ηλεκτρολόγος 3 [0.1%]; Ηλεκτρολόγος 4 [0.1%] |  | 4,926.58 |
| 68 | 1.4.1.4 | Ηλεκτρολόγος: Εισαγωγή Καλωδίων (30%) | 2d | 2025-10-03 | 2025-10-06 | 67 | 124d | 17d | finish no earlier than 2025-10-02 | Ηλεκτρολόγος 3 [0.1%]; Ηλεκτρολόγος 4 [0.1%]; Ηλεκτρολόγος 1 [0.1%]; Ηλεκτρολόγος 2 [0.1%] |  | 4,926.58 |
| 69 | 1.4.1.5 | Σκυροδέτηση Screed | 1d | 2025-10-31 | 2025-10-31 | 68 | 107d | 2d | start no earlier than 2025-10-31 | Τεχνίτης 1 [17.6%]; Screed [211.2 m2]; Εργάτης 1 [17.6%] | 2.82h | 3,612.96 |
| 70 | 1.4.1.6 | Επιχρίσματα | 5d | 2025-11-05 | 2025-11-11 | 69 | 105d |  | finish no earlier than 2025-11-11 | Επιχρίσματα [390.56 m2]; Τεχνίτης 16 [96.2%]; Τεχνίτης 17 [96.2%]; Τεχνίτης 18 [96.2%]; Τεχνίτης 19 [96.2%]; Τεχνίτης 20 [96.2%] | 192.4h | 3,290.96 |
| 71 | 1.4.1.7 | Εξωτερικές Θερμομονώσεις | 2d | 2025-11-13 | 2025-11-14 |  | 98d | 9d | finish no earlier than 2025-11-14 | Τεχνίτης 1 [72.5%]; Εργάτης 1 [72.5%]; Εργάτης 2 [72.5%]; Εργάτης 3 [72.5%]; Εργάτης 4 [72.5%]; Θερμομόνωση [109 m2] | 58h | 4,754.4 |
| 72 | 1.4.1.8 | Κεραμικά | 4d | 2025-11-28 | 2025-12-03 | 71 | 89d |  | finish no earlier than 2025-12-03 | Κεραμικά [240 m2]; Τεχνίτης 11; Σιδεράς 5 (Τεχνίτης); Σιδεράς 6 (Τεχνίτης); Σιδεράς 7 (Τεχνίτης); Σιδεράς 8 (Τεχνίτης) | 160h | 11,680 |
| 73 | 1.4.1.9 | Εξωτερικά Κουφώματα | 1d | 2025-10-10 | 2025-10-10 |  | 91d | 0d | finish no earlier than 2025-10-10 | Κουφώματα - εξώπορτα ασφαλείας [26.84 m2]; Τεχνίτης 7; Τεχνίτης 8; Κουφώματα - παράθυρα [0.7 m2] | 16h | 11,106 |
| 74 | 1.4.2 | **1ος Όροφος** | 51d | 2025-10-13 | 2025-12-23 |  | 75d |  |  |  | 717.94h | 58,661.91 |
| 75 | 1.4.2.1 | Κατασκευή Τοιχοποληρώσεων 1ου Ορόφου | 7d | 2025-10-13 | 2025-10-21 | 73 | 91d | 0d | finish no earlier than 2025-10-21 | Πηλός [3.72 m3]; Τοιχοποιία [3713 pcs]; Τεχνίτης 1 [96.4%]; Εργάτης 5 [96.4%] | 108h | 1,992.78 |
| 76 | 1.4.2.2 | Υδραυλικός: Αποχετεύσεις και Σωληνώσεις (35%) | 4d | 2025-10-22 | 2025-10-27 | 75 | 91d | 0d | finish no earlier than 2025-10-27 | Υδραυλικός 1 [0.1%]; Υδραυλικός 2 [0.1%] |  | 6,186.98 |
| 77 | 1.4.2.3 | Ηλεκτρολόγος: Σωληνώσεις (30%) | 4d | 2025-10-29 | 2025-11-03 | 76 | 91d | 0d | finish no earlier than 2025-10-30 | Ηλεκτρολόγος 1 [0.1%]; Ηλεκτρολόγος 2 [0.1%]; Ηλεκτρολόγος 3 [0.1%]; Ηλεκτρολόγος 4 [0.1%] |  | 4,926.58 |
| 78 | 1.4.2.4 | Ηλεκτρολόγος: Εισαγωγή Καλωδίων (30%) | 4d | 2025-11-04 | 2025-11-07 | 77 | 91d | 0d | finish no earlier than 2025-11-03 | Ηλεκτρολόγος 3 [0.1%]; Ηλεκτρολόγος 4 [0.1%]; Ηλεκτρολόγος 1 [0.1%]; Ηλεκτρολόγος 2 [0.1%] |  | 4,926.58 |
| 79 | 1.4.2.5 | Σκυροδέτηση Screed | 1d | 2025-11-10 | 2025-11-10 | 78 | 91d | 14d | start no earlier than 2025-11-03 | Τεχνίτης 1 [17.6%]; Screed [210.84 m2]; Εργάτης 1 [17.6%] | 2.82h | 3,606.84 |
| 80 | 1.4.2.6 | Επιχρίσματα | 6d | 2025-12-01 | 2025-12-08 | 79 | 77d | 0d | finish no earlier than 2025-12-08 | Επιχρίσματα [450 m2]; Τεχνίτης 7 [87.5%]; Τεχνίτης 8 [87.5%]; Τεχνίτης 12 [94.8%]; Τεχνίτης 13 [94.8%]; Τεχνίτης 14 [94.8%]; Τεχνίτης 15 [94.8%] | 265.92h | 4,234.2 |
| 81 | 1.4.2.7 | Ποδιές Παραθύρων | 1d | 2025-12-09 | 2025-12-09 | 80 | 77d | 0d | start no earlier than 2025-12-09 | Ποδιές Παραθύρων [9.37 meter]; Τεχνίτης 11 | 8h | 407.95 |
| 82 | 1.4.2.8 | Εξωτερικές Θερμομονώσεις | 3d | 2025-12-10 | 2025-12-12 | 81 | 77d | 2d | finish no earlier than 2025-12-12 | Τεχνίτης 7 [92%]; Τεχνίτης 8 [92%]; Τεχνίτης 9 [92%]; Τεχνίτης 10 [92%]; Θερμομόνωση - Ηχομόνωση [207 m2]; Τεχνίτης 6 [92%] | 110.4h | 9,384 |
| 83 | 1.4.2.9 | Κεραμικά | 5d | 2025-12-17 | 2025-12-23 | 82 | 75d |  | finish no earlier than 2025-12-23 | Κεραμικά [281.5 m2]; Τεχνίτης 7 [94%]; Τεχνίτης 8 [94%]; Τεχνίτης 9 [94%]; Τεχνίτης 10 [94%] | 150.4h | 13,327 |
| 84 | 1.4.2.10 | Εξωτερικά Κουφώματα | 2d | 2025-12-04 | 2025-12-05 |  | 45d | 4d | finish no earlier than 2025-12-05 | Κουφώματα - εξώπορτα ασφαλείας [4 m2]; Τεχνίτης 10 [40%]; Τεχνίτης 11 [40%]; Κουφώματα - παράθυρα [9.37 m2] | 12h | 4,531 |
| 85 | 1.4.2.11 | Ηχομόνωση | 2d | 2025-12-08 | 2025-12-10 |  | 85d |  | start no earlier than 2025-12-08 | Τεχνίτης 4 [75.3%]; Τεχνίτης 5 [75.3%]; Θερμομόνωση - Ηχομόνωση [113.35 m2]; Τεχνίτης 16 [75.8%]; Τεχνίτης 18 [75.8%]; Τεχνίτης 19 [75%] | 60.4h | 5,138 |
| 86 | 1.4.3 | **2ος Όροφος** | 43d | 2025-12-12 | 2026-02-16 |  | 40d |  |  |  | 755.14h | 59,048.5 |
| 87 | 1.4.3.1 | Κατασκευή Τοιχοποληρώσεων 2ου Ορόφου | 8d | 2025-12-12 | 2025-12-23 | 84 | 41d | 0d | finish no earlier than 2025-12-23 | Τεχνίτης 11 [84.6%]; Πηλός [3.72 m3]; Τοιχοποιία [3713 pcs]; Εργάτης 2 [84.2%] | 108h | 1,993.26 |
| 88 | 1.4.3.2 | Υδραυλικός: Αποχετεύσεις και Σωληνώσεις (35%) | 5d | 2025-12-24 | 2026-01-02 | 87 | 41d | 0d | finish no earlier than 2025-12-29 | Υδραυλικός 1 [0.1%]; Υδραυλικός 2 [0.1%] |  | 6,186.98 |
| 89 | 1.4.3.3 | Ηλεκτρολόγος: Σωληνώσεις (30%) | 4d | 2026-01-05 | 2026-01-09 | 88 | 41d | 0d | finish no earlier than 2026-01-01 | Ηλεκτρολόγος 3 [0.1%]; Ηλεκτρολόγος 4 [0.1%]; Ηλεκτρολόγος 1 [0.1%]; Ηλεκτρολόγος 2 [0.1%] |  | 4,926.58 |
| 90 | 1.4.3.4 | Ηλεκτρολόγος: Εισαγωγή Καλωδίων (30%) | 2d | 2026-01-12 | 2026-01-13 | 89 | 41d | 0d | finish no earlier than 2026-01-05 | Ηλεκτρολόγος 1 [0.1%]; Ηλεκτρολόγος 2 [0.1%]; Ηλεκτρολόγος 3 [0.1%]; Ηλεκτρολόγος 4 [0.1%] |  | 4,926.58 |
| 91 | 1.4.3.5 | Σκυροδέτηση Screed | 1d | 2026-01-14 | 2026-01-14 | 90 | 41d | 0d | start no earlier than 2026-01-06 | Τεχνίτης 1 [17.6%]; Screed [211.67 m2]; Εργάτης 1 [17.6%] | 2.82h | 3,620.95 |
| 92 | 1.4.3.6 | Επιχρίσματα | 8d | 2026-01-15 | 2026-01-27 | 91 | 41d | 0d | finish no earlier than 2026-01-14 | Επιχρίσματα [450 m2]; Τεχνίτης 6 [69.2%]; Τεχνίτης 4 [69.2%]; Τεχνίτης 5 [69.2%]; Τεχνίτης 17 [69.2%]; Τεχνίτης 18 [69.2%]; Τεχνίτης 20 [69%] | 265.92h | 4,234.2 |
| 93 | 1.4.3.7 | Ποδιές Παραθύρων | 2d | 2026-01-27 | 2026-01-29 | 92 | 41d | 1d | start no earlier than 2026-01-15 | Τεχνίτης 11 [50%]; Ποδιές Παραθύρων [9.37 meter] | 8h | 407.95 |
| 94 | 1.4.3.8 | Εξωτερικές Θερμομονώσεις | 4d | 2026-01-30 | 2026-02-04 | 93 | 40d | 0d | start no earlier than 2026-01-30 | Θερμομόνωση [207 m2]; Τεχνίτης 12 [69%]; Τεχνίτης 14 [69%]; Τεχνίτης 15 [69%]; Τεχνίτης 9 [69%]; Τεχνίτης 17 [69%] | 110.4h | 9,384 |
| 95 | 1.4.3.9 | Κεραμικά | 8d | 2026-02-05 | 2026-02-16 | 94 | 40d |  | finish no earlier than 2026-01-29 | Τεχνίτης 2 [58.8%]; Τεχνίτης 3 [58.8%]; Τεχνίτης 4 [58.8%]; Τεχνίτης 5 [58.8%]; Κεραμικά [281.5 m2]; Τεχνίτης 16 [62.9%] | 188h | 13,703 |
| 96 | 1.4.3.10 | Εξωτερικά Κουφώματα | 1d | 2026-01-16 | 2026-01-16 |  | 22d | 0d | finish no earlier than 2026-01-16 | Τεχνίτης 9 [75%]; Τεχνίτης 10 [75%]; Κουφώματα - παράθυρα [9.37 m2]; Κουφώματα - εξώπορτα ασφαλείας [4 m2] | 12h | 4,531 |
| 97 | 1.4.3.11 | Ηχομόνωση | 2d | 2026-01-19 | 2026-01-20 |  | 59d |  | start no earlier than 2026-01-19 | Τεχνίτης 12 [75%]; Τεχνίτης 13 [75%]; Τεχνίτης 14 [75%]; Τεχνίτης 15 [75%]; Θερμομόνωση - Ηχομόνωση [113.35 m2]; Τεχνίτης 10 [75%] | 60h | 5,134 |

| ID | WBS | Task | Duration | Start | Finish | Predecessors | Total slack | Free slack | Constraint | Resources | Work | Cost |
| --- | --- | --- | --- | --- | --- | --- | --- | --- | --- | --- | --- | --- |
| 98 | 1.4.4 | **3ος Όροφος** | 39d | 2026-01-19 | 2026-03-12 |  | 22d |  |  |  | 733.32h | 60,758.06 |
| 99 | 1.4.4.1 | Κατασκευή Τοιχοποληρώσεων 3ου Ορόφου | 10d | 2026-01-19 | 2026-01-30 | 96 | 22d | 0d | finish no earlier than 2026-01-26 | Πηλός [3.73 m3]; Τοιχοποιία [3713 pcs]; Εργάτης 6 [63.9%]; Τεχνίτης 19 [71.1%] | 108h | 2,004.19 |
| 100 | 1.4.4.2 | Υδραυλικός: Αποχετεύσεις και Σωληνώσεις (35%) | 4d | 2026-02-02 | 2026-02-05 | 99 | 22d | 0d | finish no earlier than 2026-01-30 | Υδραυλικός 1 [0.1%]; Υδραυλικός 2 [0.1%] |  | 6,209.4 |
| 101 | 1.4.4.3 | Ηλεκτρολόγος: Σωληνώσεις (30%) | 4d | 2026-02-06 | 2026-02-11 | 100 | 22d | 0d | finish no earlier than 2026-02-04 | Ηλεκτρολόγος 1 [0.1%]; Ηλεκτρολόγος 2 [0.1%]; Ηλεκτρολόγος 3 [0.1%]; Ηλεκτρολόγος 4 [0.1%] |  | 4,943.8 |
| 102 | 1.4.4.4 | Ηλεκτρολόγος: Eισαγωγή Kαλωδίων (30%) | 2d | 2026-02-12 | 2026-02-13 | 101 | 22d | 0d | finish no earlier than 2026-02-06 | Ηλεκτρολόγος 3 [0.1%]; Ηλεκτρολόγος 4 [0.1%]; Ηλεκτρολόγος 1 [0.1%]; Ηλεκτρολόγος 2 [0.1%] |  | 4,371 |
| 103 | 1.4.4.5 | Σκυροδέτηση Screed | 1d | 2026-02-16 | 2026-02-16 | 102 | 22d | 0d | start no earlier than 2026-02-09 | Τεχνίτης 10 [17.8%]; Screed [213.6 m2]; Εργάτης 6 [17.8%] | 2.84h | 3,653.92 |
| 104 | 1.4.4.6 | Επιχρίσματα | 8d | 2026-02-17 | 2026-02-26 | 103 | 22d | 0d | finish no earlier than 2026-02-17 | Επιχρίσματα [450 m2]; Τεχνίτης 3 [75%]; Τεχνίτης 4 [75%]; Τεχνίτης 19 [68.1%]; Τεχνίτης 12 [68.1%]; Τεχνίτης 6 [73.8%] | 221.6h | 3,791 |
| 105 | 1.4.4.7 | Ποδιές Παραθύρων | 2d | 2026-02-27 | 2026-03-02 | 104 | 22d | 0d | start no earlier than 2026-02-18 | Ποδιές Παραθύρων [9.37 meter]; Τεχνίτης 17 [50%] | 8h | 407.95 |
| 106 | 1.4.4.8 | Εξωτερικές Θερμομονώσεις | 3d | 2026-03-03 | 2026-03-05 | 105 | 22d | 0d | finish no earlier than 2026-02-23 | Τεχνίτης 6 [92%]; Θερμομόνωση [207 m2]; Τεχνίτης 12 [92%]; Τεχνίτης 13 [92%]; Τεχνίτης 16 [92%]; Τεχνίτης 17 [92%]; Τεχνίτης 18 [92%] | 132.48h | 9,604.8 |
| 107 | 1.4.4.9 | Κεραμικά | 5d | 2026-03-06 | 2026-03-12 | 106 | 22d |  | finish no earlier than 2026-03-04 | Κεραμικά [281.5 m2]; Τεχνίτης 1 [94%]; Τεχνίτης 2 [94%]; Τεχνίτης 3 [94%]; Τεχνίτης 4 [94%]; Τεχνίτης 5 [94%] | 188h | 13,703 |
| 108 | 1.4.4.10 | Εξωτερικά Κουφώματα | 2d | 2026-03-04 | 2026-03-05 |  | 25d | 0d | finish no earlier than 2026-03-05 | Κουφώματα - πόρτες εσωτερικές [8 m2]; Κουφώματα - παράθυρα [9.37 m2]; Κουφώματα - εξώπορτα ασφαλείας [4 m2]; Τεχνίτης 14 [37.5%]; Τεχνίτης 15 [37.5%] | 12h | 6,931 |
| 109 | 1.4.4.11 | Ηχομόνωση | 2d | 2026-03-06 | 2026-03-09 | 108 | 25d |  |  | Τεχνίτης 16 [75.5%]; Τεχνίτης 17 [75.5%]; Τεχνίτης 18 [75.5%]; Τεχνίτης 19 [75.5%]; Τεχνίτης 20 [75.5%]; Θερμομόνωση - Ηχομόνωση [113.35 m2] | 60.4h | 5,138 |
| 110 | 1.5 | **Φάση 4: Τελειώματα** | 86d | 2025-11-13 | 2026-03-18 |  | 18d |  |  |  | 422.08h | 59,930.1 |
| 111 | 1.5.1 | **Ισόγειο** | 25d | 2025-11-13 | 2025-12-17 |  | 51d |  |  |  | 85h | 5,787.59 |
| 112 | 1.5.1.1 | Ελαιοχρωματισμός (1o χέρι) | 3d | 2025-11-13 | 2025-11-17 |  | 51d | 0d | finish no earlier than 2025-11-17 | Μπογιατζής 1 [0.1%]; Εργασίες Μπογιατίσματος [155.1 m2]; Ελαιοχρωματισμοί [155.1 m2] |  | 589.38 |
| 113 | 1.5.1.2 | Τοποθέτηση Εσωτερικών Κουφωμάτων | 1d | 2025-12-17 | 2025-12-17 | 120 | 51d | 0d | start no earlier than 2025-12-15 | Κουφώματα - πόρτες εσωτερικές [1 m2]; Τεχνίτης 4 [6.3%]; Τεχνίτης 6 [6.2%] | 1h | 310 |
| 114 | 1.5.1.3 | Ελαιοχρωματισμός (2o χέρι) | 3d | 2025-11-18 | 2025-11-20 | 112 | 51d | 0d | finish no earlier than 2025-11-19 | Μπογιατζής 1 [0.1%]; Εργασίες Μπογιατίσματος [155.1 m2]; Ελαιοχρωματισμοί [155.1 m2] |  | 589.38 |
| 115 | 1.5.1.4 | Ηλεκτρολόγος: Τοποθέτηση Πριζών (20%) | 2d | 2025-11-21 | 2025-11-24 | 114 | 51d | 0d | finish no earlier than 2025-11-21 | Ηλεκτρολόγος 1 [0.1%]; Ηλεκτρολόγος 2 [0.1%]; Ηλεκτρολόγος 3 [0.1%]; Ηλεκτρολόγος 4 [0.1%] |  | 3,093.45 |
| 116 | 1.5.1.5 | Ελαιοχρωματισμός (3o χέρι) | 2d | 2025-11-25 | 2025-11-26 | 115 | 51d | 0d | finish no earlier than 2025-11-26 | Μπογιατζής 1 [0.1%]; Εργασίες Μπογιατίσματος [155.1 m2]; Ελαιοχρωματισμοί [155.1 m2] |  | 589.38 |
| 117 | 1.5.1.6 | Καθαρισμός και Παράδοση | 7d | 2025-11-27 | 2025-12-05 | 116 | 51d | 0d | finish no earlier than 2025-12-05 | Τεχνίτης 1 [50%]; Εργάτης 1 [50%]; Εργάτης 2 [50%] | 84h | 616 |
| 118 | 1.5.2 | **1ος Όροφος** | 27d | 2025-12-08 | 2026-01-19 |  | 51d |  |  |  | 119.36h | 22,160.38 |
| 119 | 1.5.2.1 | Ελαιοχρωματισμός (1o χέρι) | 3d | 2025-12-08 | 2025-12-10 | 117 | 51d | 0d | finish no earlier than 2025-12-09 | Μπογιατζής 1 [0.1%]; Εργασίες Μπογιατίσματος [149.5 m2]; Ελαιοχρωματισμοί [149.5 m2] |  | 568.1 |
| 120 | 1.5.2.2 | Υδραυλικός: Τοποθέτηση Ειδών Υγιεινής (30%) | 4d | 2025-12-11 | 2025-12-16 | 119 | 51d | 0d | finish no earlier than 2025-12-12 | Υδραυλικός 1 [0.1%]; Υδραυλικός 2 [0.1%]; Υδραυλικός 3 [0.1%]; Υδραυλικός 4 [0.1%] |  | 5,957.75 |
| 121 | 1.5.2.3 | Τοποθέτηση Εσωτερικών Κουφωμάτων | 1d | 2025-12-17 | 2025-12-17 | 120 | 51d | 0d | finish no earlier than 2025-12-15 | Κουφώματα - πόρτες εσωτερικές [8 m2]; Τεχνίτης 4 [50%]; Τεχνίτης 13 [50%] | 8h | 2,480 |
| 122 | 1.5.2.4 | Ελαιοχρωματισμός (2o χέρι) | 3d | 2025-12-18 | 2025-12-22 | 121, 113 | 51d | 0d | finish no earlier than 2025-12-17 | Μπογιατζής 1 [0.1%]; Εργασίες Μπογιατίσματος [149.5 m2]; Ελαιοχρωματισμοί [149.5 m2] |  | 568.1 |
| 123 | 1.5.2.5 | Τoποθέτηση Κουζίνας | 1d | 2025-12-23 | 2025-12-23 | 122 | 51d | 0d | finish no earlier than 2025-12-18 | Τεχνίτης 1 [52%]; Τεχνίτης 2 [52%]; Κουζίνες [5.15 meter]; Είδη υγιεινής - Νεροχύτης κουζίνας [2 pcs]; Είδη υγιεινής - Νεροχύτης κουζίνας [400%]; Είδη υγιεινής - Ντουζιέρα [400%]; Είδη υγιεινής - Νιπτήρας μπάνιου [400%] | 8.32h | 3,473.2 |
| 124 | 1.5.2.6 | Τoποθέτηση Ντουλαπιών Δωματίων | 2d | 2025-12-24 | 2025-12-26 | 123 | 51d | 0d | finish no earlier than 2025-12-19 | Τεχνίτης 1 [59.5%]; Τεχνίτης 2 [59.5%]; Ντουλάπες [948%] | 19.04h | 2,276 |
| 125 | 1.5.2.7 | Υδραυλικός: Τοποθέτηση Βρυσών (15%) | 1d | 2025-12-29 | 2025-12-29 | 124 | 51d | 0d | start no earlier than 2025-12-19 | Υδραυλικός 1 [0.1%]; Υδραυλικός 2 [0.1%]; Υδραυλικός 3 [0.1%]; Υδραυλικός 4 [0.1%] |  | 2,559.68 |
| 126 | 1.5.2.8 | Ηλεκτρολόγος: Τοποθέτηση Πριζών (20%) | 2d | 2025-12-30 | 2026-01-02 | 125 | 51d | 0d | finish no earlier than 2025-12-23 | Ηλεκτρολόγος 3 [0.1%]; Ηλεκτρολόγος 4 [0.1%]; Ηλεκτρολόγος 1 [0.1%]; Ηλεκτρολόγος 2 [0.1%] |  | 3,093.45 |
| 127 | 1.5.2.9 | Ελαιοχρωματισμός (3o χέρι) | 3d | 2026-01-05 | 2026-01-08 | 126 | 51d | 0d | finish no earlier than 2025-12-25 | Μπογιατζής 1 [0.1%]; Εργασίες Μπογιατίσματος [149.5 m2]; Ελαιοχρωματισμοί [149.5 m2] |  | 568.1 |
| 128 | 1.5.2.10 | Καθαρισμός και Παράδοση | 7d | 2026-01-09 | 2026-01-19 | 127 | 51d | 0d | finish no earlier than 2026-01-05 | Εργάτης 3 [50%]; Εργάτης 4 [50%]; Τεχνίτης 11 [50%] | 84h | 616 |

| ID | WBS | Task | Duration | Start | Finish | Predecessors | Total slack | Free slack | Constraint | Resources | Work | Cost |
| --- | --- | --- | --- | --- | --- | --- | --- | --- | --- | --- | --- | --- |
| 129 | 1.5.3 | **2ος Όροφος** | 20d | 2026-01-08 | 2026-02-04 |  | 20d |  |  |  | 98.36h | 19,554.23 |
| 130 | 1.5.3.1 | Ελαιοχρωματισμός (1o χέρι) | 3d | 2026-01-20 | 2026-01-22 | 128 | 51d | 0d | finish no earlier than 2026-01-08 | Μπογιατζής 1 [0.1%]; Εργασίες Μπογιατίσματος [149.5 m2]; Ελαιοχρωματισμοί [149.5 m2] |  | 568.1 |
| 131 | 1.5.3.2 | Υδραυλικός: Τοποθέτηση Eιδών Yγιεινής (30%) | 4d | 2026-01-08 | 2026-01-13 |  | 20d | 0d | finish no earlier than 2026-01-13 | Υδραυλικός 1 [0.1%]; Υδραυλικός 2 [0.1%]; Υδραυλικός 3 [0.1%]; Υδραυλικός 4 [0.1%] |  | 3,505.6 |
| 132 | 1.5.3.3 | Τοποθέτηση Eσωτερικών Kουφωμάτων | 1d | 2026-01-23 | 2026-01-23 | 130 | 51d | 0d | finish no earlier than 2026-01-14 | Κουφώματα - πόρτες εσωτερικές [8 m2]; Τεχνίτης 14 [50%]; Τεχνίτης 15 [50%] | 8h | 2,480 |
| 133 | 1.5.3.4 | Ελαιοχρωματισμός (2o χέρι) | 3d | 2026-01-14 | 2026-01-16 | 131 | 20d | 0d | finish no earlier than 2026-01-16 | Μπογιατζής 1 [0.1%]; Εργασίες Μπογιατίσματος [149.5 m2]; Ελαιοχρωματισμοί [149.5 m2] |  | 568.1 |
| 134 | 1.5.3.5 | Τoποθέτηση Κουζίνας | 1d | 2026-01-26 | 2026-01-26 | 132 | 51d | 0d | finish no earlier than 2026-01-19 | Κουζίνες [5.15 meter]; Είδη υγιεινής - Νεροχύτης κουζίνας [2 pcs]; Είδη υγιεινής - Νιπτήρας μπάνιου [400%]; Είδη υγιεινής - Νεροχύτης κουζίνας [400%]; Είδη υγιεινής - Ντουζιέρα [400%]; Τεχνίτης 1 [52%]; Τεχνίτης 12 [52%] | 8.32h | 3,473.2 |
| 135 | 1.5.3.6 | Τoποθέτηση Ντουλαπιών Δωματίων | 2d | 2026-01-19 | 2026-01-20 | 133 | 20d | 0d | finish no earlier than 2026-01-20 | Ντουλάπες [948%]; Τεχνίτης 7 [59.5%]; Τεχνίτης 8 [59.5%] | 19.04h | 2,276 |
| 136 | 1.5.3.7 | Υδραυλικός: Τοποθέτηση Βρυσών (15%) | 1d | 2026-01-27 | 2026-01-27 | 134 | 51d | 0d | start no earlier than 2026-01-20 | Υδραυλικός 1 [0.1%]; Υδραυλικός 2 [0.1%]; Υδραυλικός 3 [0.1%]; Υδραυλικός 4 [0.1%] |  | 2,559.68 |
| 137 | 1.5.3.8 | Ηλεκτρολόγος: Τοποθέτηση Πριζών (20%) | 2d | 2026-01-21 | 2026-01-22 | 135 | 20d | 2d | finish no earlier than 2026-01-22 | Ηλεκτρολόγος 1 [0.1%]; Ηλεκτρολόγος 2 [0.1%]; Ηλεκτρολόγος 3 [0.1%]; Ηλεκτρολόγος 4 [0.1%] |  | 3,093.45 |
| 138 | 1.5.3.9 | Ελαιοχρωματισμός (3o χέρι) | 3d | 2026-01-28 | 2026-01-30 | 136 | 51d |  | finish no earlier than 2026-01-26 | Μπογιατζής 1 [0.1%]; Εργασίες Μπογιατίσματος [149.5 m2]; Ελαιοχρωματισμοί [149.5 m2] |  | 568.1 |
| 139 | 1.5.3.10 | Καθαρισμός και Παράδοση | 7d | 2026-01-27 | 2026-02-04 | 137 | 18d | 0d | finish no earlier than 2026-02-04 | Εργάτης 5 [37.5%]; Τεχνίτης 13 [37.5%]; Εργάτης 4 [37.5%] | 63h | 462 |
| 140 | 1.5.4 | **3ος Όροφος** | 30d | 2026-02-05 | 2026-03-18 |  | 18d |  |  |  | 119.36h | 12,427.9 |
| 141 | 1.5.4.1 | Ελαιοχρωματισμός (1o χέρι) | 4d | 2026-02-05 | 2026-02-10 | 139 | 18d | 0d | finish no earlier than 2026-02-09 | Μπογιατζής 1 [0.1%]; Εργασίες Μπογιατίσματος [149.5 m2]; Ελαιοχρωματισμοί [149.5 m2] |  | 568.1 |
| 142 | 1.5.4.2 | Υδραυλικός: Τοποθέτηση Ειδών Υγιεινής (30%) | 4d | 2026-02-11 | 2026-02-16 | 141 | 18d | 0d | finish no earlier than 2026-02-12 | Υδραυλικός 3 [0.1%]; Υδραυλικός 4 [0.1%]; Υδραυλικός 1 [0.1%]; Υδραυλικός 2 [0.1%] |  | 1,148.8 |
| 143 | 1.5.4.3 | Τοποθέτηση Εσωτερικών Κουφωμάτων | 1d | 2026-02-17 | 2026-02-17 | 142 | 18d | 0d | finish no earlier than 2026-02-13 | Κουφώματα - πόρτες εσωτερικές [8 m2]; Τεχνίτης 15 [50%]; Τεχνίτης 16 [50%] | 8h | 2,480 |
| 144 | 1.5.4.4 | Ελαιοχρωματισμός (2o χέρι) | 3d | 2026-02-18 | 2026-02-20 | 143 | 18d | 0d | finish no earlier than 2026-02-17 | Μπογιατζής 1 [0.1%]; Εργασίες Μπογιατίσματος [149.5 m2]; Ελαιοχρωματισμοί [149.5 m2] |  | 568.1 |
| 145 | 1.5.4.5 | Τoποθέτηση Κουζίνας | 1d | 2026-02-23 | 2026-02-23 | 144 | 18d | 0d | finish no earlier than 2026-02-18 | Κουζίνες [5.15 meter]; Είδη υγιεινής - Νεροχύτης κουζίνας [2 pcs]; Τεχνίτης 2 [52%]; Είδη υγιεινής - Νιπτήρας μπάνιου [400%]; Είδη υγιεινής - Νεροχύτης κουζίνας [400%]; Είδη υγιεινής - Ντουζιέρα [400%]; Τεχνίτης 16 [52%] | 8.32h | 3,473.2 |
| 146 | 1.5.4.6 | Τoποθέτηση Ντουλαπιών Δωματίων | 3d | 2026-02-24 | 2026-02-26 | 145 | 18d | 0d | finish no earlier than 2026-02-19 | Ντουλάπες [948%]; Τεχνίτης 13 [39.8%]; Τεχνίτης 15 [39.5%] | 19.04h | 2,276 |
| 147 | 1.5.4.7 | Υδραυλικός: Τοποθέτηση Βρυσών (15%) | 1d | 2026-02-27 | 2026-02-27 | 146 | 18d | 0d | start no earlier than 2026-02-19 | Υδραυλικός 1 [0.1%]; Υδραυλικός 2 [0.1%]; Υδραυλικός 3 [0.1%]; Υδραυλικός 4 [0.1%] |  | 153.6 |
| 148 | 1.5.4.8 | Ηλεκτρολόγος: Τοποθέτηση Πριζών (20%) | 3d | 2026-03-02 | 2026-03-04 | 147 | 18d | 0d | finish no earlier than 2026-02-23 | Ηλεκτρολόγος 1 [0.1%]; Ηλεκτρολόγος 2 [0.1%]; Ηλεκτρολόγος 3 [0.1%]; Ηλεκτρολόγος 4 [0.1%] |  | 576 |
| 149 | 1.5.4.9 | Ελαιοχρωματισμός (3o χέρι) | 3d | 2026-03-05 | 2026-03-09 | 148 | 18d | 0d | finish no earlier than 2026-02-25 | Μπογιατζής 1 [0.1%]; Εργασίες Μπογιατίσματος [149.5 m2]; Ελαιοχρωματισμοί [149.5 m2] |  | 568.1 |
| 150 | 1.5.4.10 | Καθαρισμός και Παράδοση | 7d | 2026-03-10 | 2026-03-18 | 149 | 18d |  | finish no earlier than 2026-03-06 | Εργάτης 5 [50%]; Εργάτης 6 [50%]; Τεχνίτης 11 [50%] | 84h | 616 |
